# Hædda barneskole GANTT

Schedule from MS Project, 2025-02-01 to 2026-05-08, costs in kr.

## Calendars

- Standard: Mon-Fri 08:00-12:00, 13:00-17:00; Sat-Sun off.

## Schedule

| ID | WBS | Task | Type | Duration | Start | Finish | Predecessors | Total slack | Free slack | Cost | Ressurs |
| --- | --- | --- | --- | --- | --- | --- | --- | --- | --- | --- | --- |
| 1 | 1 | **Prosjektledelse og Adminstrasjon** |  | 310d | 2025-02-03 | 2026-04-10 |  | 20d |  | 25,000,000 | Prosjektleder |
| 2 | 1.1 | Prosjektstyring |  | 15.5mo | 2025-02-03 | 2026-04-10 |  | 20d |  | 10,000,000 | Prosjektleder |
| 3 | 1.2 | Kontraksoppfølging |  | 13mo | 2025-02-03 | 2026-01-30 |  | 70d |  | 7,000,000 | Prosjektleder |
| 4 | 1.3 | Interessehåndtering |  | 14mo | 2025-02-03 | 2026-02-27 |  | 50d |  | 4,000,000 | Prosjektleder |
| 5 | 1.4 | Risiko- og kvalitetsikring |  | 14.5mo | 2025-02-03 | 2026-03-13 |  | 40d |  | 4,000,000 | HMS/KS-ansvarlig |
| 6 | 2 | **Planlegging og Prosjektering** |  | 60d | 2025-02-03 | 2025-04-25 |  | 0d |  | 70,000,000 | Prosjekteringsleder |
| 7 | 2.1 | Detaljeprosjektering |  | 3mo | 2025-02-03 | 2025-04-25 |  | 0d |  | 50,000,000 | Arkitekt |
| 8 | 2.2 | Offentlige godkjenninger |  | 2.5mo | 2025-02-03 | 2025-04-11 |  | 10d |  | 12,000,000 | Arkitet/prosjektleder |
| 9 | 2.3 | Konkurransegrunnlag |  | 2mo | 2025-02-03 | 2025-03-28 |  | 20d | 0d | 8,000,000 | Innkjøpsleder |
| 10 | 3 | **Forberedelse og Riving** |  | 40d | 2025-04-28 | 2025-06-20 | 6 | 0d |  | 70,000,000 | Entreprenør |
| 11 | 3.1 | Miljøsanering |  | 0.5mo | 2025-04-28 | 2025-05-09 | 6 | 0d |  | 12,000,000 | Miljørådgiver |
| 12 | 3.2 | Riving | milestone | 0mo | 2025-05-09 | 2025-05-09 | 11 | 0d |  | 18,000,000 | Entreprenør |
| 13 | 3.3 | Grunnarbeid |  | 1.5mo | 2025-05-12 | 2025-06-20 | 12 | 0d |  | 40,000,000 | Entreprenør |
| 14 | 4 | **Skolebygg-Byggningsmessig arbeid** |  | 190d | 2025-06-23 | 2026-03-13 | 10 | 0d |  | 310,000,000 | Total Entreprenør |
| 15 | 4.1 | Råbygg |  | 7mo | 2025-06-23 | 2026-01-02 | 13 | 0d |  | 190,000,000 | Total Entreprenør |
| 16 | 4.2 | Innvending og komplettering - 1 etasje |  | 2.5mo | 2026-01-05 | 2026-03-13 | 15 | 0d |  | 35,000,000 | Total Entreprenør |
| 17 | 4.3 | Innvending og komplentering - 2etasje |  | 2.5mo | 2026-01-05 | 2026-03-13 | 15 | 0d |  | 35,000,000 | Total Entreprenør |
| 18 | 4.4 | Innvending og komplementering - 3 etasje |  | 2.5mo | 2026-01-05 | 2026-03-13 | 15 | 0d |  | 35,000,000 | Total Entreprenør |
| 19 | 4.5 | Gymsal |  | 1.5mo | 2026-01-05 | 2026-02-13 | 15 | 20d |  | 15,000,000 | Total Entreprenør |
| 20 | 5 | **Skolebygg - Tekniske Anlegg** |  | 60d | 2026-01-05 | 2026-03-27 | 15 | 0d |  | 175,000,000 | Teknisk Entreprenør |
| 21 | 5.1 | VVS |  | 3mo | 2026-01-05 | 2026-03-27 | 15 | 0d |  | 55,000,000 | VVS Entreprenør |
| 22 | 5.2 | Elektro |  | 3mo | 2026-01-05 | 2026-03-27 | 15 | 0d |  | 45,000,000 | Elektro Entreprenør |
| 23 | 5.3 | Heis og Vertikal Transport |  | 1.5mo | 2026-01-05 | 2026-02-13 | 15 | 30d |  | 12,000,000 | Heisleverandør |
| 24 | 5.4 | Automasjon (SD-anlegg) |  | 1.5mo | 2026-01-05 | 2026-02-13 | 15 | 30d |  | 13,000,000 | Automasjonsentreprenør |
| 25 | 5.5 | IKT og Sikkerhet |  | 2mo | 2026-01-05 | 2026-02-27 | 15 | 20d |  | 25,000,000 | Landskapsentreprenør |

| ID | WBS | Task | Type | Duration | Start | Finish | Predecessors | Total slack | Cost | Ressurs |
| --- | --- | --- | --- | --- | --- | --- | --- | --- | --- | --- |
| 26 | 5.6 | **Uetomhus og uteområder** |  | 40d | 2026-01-05 | 2026-02-27 | 10 | 20d | 25,000,000 | Landkskapsentreprenør |
| 27 | 5.6.1 | Lekearealer |  | 1.5mo | 2026-01-05 | 2026-02-13 | 13 | 30d | 7,000,000 | Landskapsentreprenør |
| 28 | 5.6.2 | Sport og Fritid |  | 1.5mo | 2026-01-05 | 2026-02-13 | 13 | 30d | 6,000,000 | Landsksapsentreprenør |
| 29 | 5.6.3 | Infrastruktur |  | 2mo | 2026-01-05 | 2026-02-27 | 13 | 20d | 8,000,000 | Anleggsentreprenør |
| 30 | 5.6.4 | Grøntanlegg |  | 1mo | 2026-01-05 | 2026-01-30 | 13 | 40d | 4,000,000 | Landskapsentreprenør |
| 31 | 6 | **Inventar og Utstyr** |  | 10d? | 2026-03-16 | 2026-03-27 | 14 | 0d | 70,000,000 | Innkjøpsleder |
| 32 | 6.1 | Løst Inventar |  | 0.5mo | 2026-03-16 | 2026-03-27 | 14 | 0d | 30,000,000 | Innkjøpsleder |
| 33 | 6.2 | Spesialutstyr |  | 0.05mo? | 2026-03-16 | 2026-03-16 | 14 | 9d | 25,000,000 | Innkjøpsleder |
| 34 | 6.3 | AV-Løsninger |  | 0.5mo | 2026-03-16 | 2026-03-27 | 14 | 0d | 15,000,000 | IKT-Leverandør |
| 35 | 7 | **Overtakelse og Avslutning** |  | 30d | 2026-03-30 | 2026-05-08 | 20, 31 | 0d | 30,000,000 | Prosjektleder |
| 36 | 7.1 | Testing og Prøvedrift |  | 0.5mo | 2026-03-30 | 2026-04-10 | 20, 31 | 0d | 10,000,000 | Prosjektleder |
| 37 | 7.2 | Ferdigbefaring(BP3) |  | 0.5mo | 2026-04-13 | 2026-04-24 | 36 | 0d | 8,000,000 | Prosjektleder |
| 38 | 7.3 | Dokumentasjon |  | 0.5mo | 2026-04-13 | 2026-04-24 | 36 | 5d | 5,000,000 | FDV-ansvarlig |
| 39 | 7.4 | Brukeropplæring |  | 0.25mo | 2026-04-27 | 2026-05-01 | 37 | 0d | 4,000,000 | Driftssjef |
| 40 | 7.5 | Prosjektevaluering |  | 0.25mo | 2026-05-04 | 2026-05-08 | 37, 38, 39 | 0d | 3,000,000 | Prosjektleder |
| 41 | 8 | Milepær: BP2 - Godkjent prosjektplan | milestone | 0mo | 2025-03-28 | 2025-03-28 | 9 | 290d |  | Prosjektleder |
| 42 | 9 | Milepæl: BP3 - Godkjent ferdigstillelse | milestone | 0mo | 2026-04-24 | 2026-04-24 | 37 | 10d |  | Prosjektleder |
| 43 | 10 | Milepæl: Har frist 15 main 2026 | milestone | 0mo | 2025-02-01 | 2025-02-01 |  | 330d |  | Prosjektforslag kap 4,3 |
| 44 | 11 | Milepæl: Skolestart august 2026 | milestone | 0mo | 2025-02-01 | 2025-02-01 |  | 330d |  | Hædda Kommune |
