# Fiktivt byggprosjekt – Leilighetsbygg Solsiden

Schedule from MS Project, 2026-04-06 to 2026-07-29.
Prosjektsammendrag

## Calendars

- Standard: Mon-Fri 08:00-12:00, 13:00-17:00; Sat-Sun off.

## Resources

| Resource |
| --- |
| Prosjektleder |
| Prosjekteringsleder |
| Grunnentreprenør |
| Betonglag |
| Tømrerlag |
| VVS/Elektro-team |
| Maler/Gulvlag |
| Leverandør/Logistikk |
| Kontrollør |

## Schedule

| ID | WBS | Task | Type | Duration | Start | Finish | Predecessors | Total slack | Free slack | Calendar | Resources | Work |
| --- | --- | --- | --- | --- | --- | --- | --- | --- | --- | --- | --- | --- |
| 1 | 1.1 | **Forprosjekt og myndigheter** |  | 27d | 2026-04-06 | 2026-05-12 |  | 0d |  | Standard |  | 336h |
| 2 | 1.1.1 | Oppstartsmøte |  | 1d | 2026-04-06 | 2026-04-06 |  | 0d |  | Standard | Prosjektleder | 8h |
| 3 | 1.1.2 | Prosjektering |  | 10d | 2026-04-07 | 2026-04-20 | 2 | 0d |  | Standard | Prosjekteringsleder | 80h |
| 4 | 1.1.3 | Bestille stål og takstoler |  | 4d | 2026-04-21 | 2026-04-24 | 3 | 17d | 0d | Standard | Prosjektleder | 32h |
| 5 | 1.1.4 | Levere stål og takstoler |  | 12d | 2026-04-27 | 2026-05-12 | 4 | 17d |  | Standard | Leverandør/Logistikk | 96h |
| 6 | 1.1.5 | Myndighetsbehandling |  | 15d | 2026-04-21 | 2026-05-11 | 3 | 0d |  | Standard | Prosjekteringsleder | 120h |
| 7 | 1.1.6 | Igangsettingstillatelse | milestone | 0d | 2026-05-11 | 2026-05-11 | 6 | 0d |  | Standard |  |  |
| 8 | 1.2 | **Bygging råbygg** |  | 27d | 2026-05-12 | 2026-06-17 |  | 0d |  | Standard |  | 240h |
| 9 | 1.2.1 | Rigg og sikring |  | 3d | 2026-05-12 | 2026-05-14 | 7 | 0d |  | Standard | Grunnentreprenør | 24h |
| 10 | 1.2.2 | Graving byggegrop |  | 5d | 2026-05-15 | 2026-05-21 | 9 | 0d |  | Standard | Grunnentreprenør | 40h |
| 11 | 1.2.3 | Fundament/rebar/forskaling |  | 6d | 2026-05-19 | 2026-05-26 | 10SS+2d, 10FF | 0d |  | Standard | Betonglag | 48h |
| 12 | 1.2.4 | Støp fundament |  | 2d | 2026-05-27 | 2026-05-28 | 11 | 0d |  | Standard | Betonglag | 16h |
| 13 | 1.2.5 | Herdetid fundament |  | 5d | 2026-05-29 | 2026-06-04 | 12 | 0d |  | Standard |  |  |
| 14 | 1.2.6 | Montasje bæresystem |  | 8d | 2026-06-05 | 2026-06-16 | 13, 5 | 0d |  | Standard | Tømrerlag | 64h |
| 15 | 1.2.7 | Tak og klimaskjerm |  | 6d | 2026-06-10 | 2026-06-17 | 14SS+3d, 14FF | 0d |  | Standard | Tømrerlag | 48h |
| 16 | 1.2.8 | Fasade tett | milestone | 0d | 2026-06-17 | 2026-06-17 | 15 | 0d |  | Standard |  |  |
| 17 | 1.3 | **Tekniske fag og ferdigstillelse** |  | 30d | 2026-06-18 | 2026-07-29 |  | 0d |  | Standard |  | 344h |
| 18 | 1.3.1 | Råinstallasjoner VVS/elektro |  | 10d | 2026-06-18 | 2026-07-01 | 16 | 0d |  | Standard | VVS/Elektro-team | 80h |
| 19 | 1.3.2 | Innvendige vegger |  | 7d | 2026-06-22 | 2026-06-30 | 18SS+2d | 0d |  | Standard | Tømrerlag | 56h |
| 20 | 1.3.3 | Himling og gulv |  | 8d | 2026-07-01 | 2026-07-10 | 19 | 0d |  | Standard | Maler/Gulvlag | 64h |
| 21 | 1.3.4 | Overflatearbeider |  | 6d | 2026-07-13 | 2026-07-20 | 20 | 0d |  | Standard | Maler/Gulvlag | 48h |
| 22 | 1.3.5 | FDV-dokumentasjon |  | 4d | 2026-07-22 | 2026-07-27 | 18, 23FF | 0d |  | Standard | Prosjektleder | 32h |
| 23 | 1.3.6 | Tester og idriftsettelse |  | 5d | 2026-07-21 | 2026-07-27 | 18, 21 | 0d |  | Standard | Leverandør/Logistikk | 40h |
| 24 | 1.3.7 | Sluttkontroll |  | 2d | 2026-07-28 | 2026-07-29 | 23, 22 | 0d |  | Standard | Kontrollør | 16h |
| 25 | 1.3.8 | Overtakelse | milestone | 0d | 2026-07-29 | 2026-07-29 | 24 | 0d |  | Standard |  |  |
| 26 | 1.3.9 | Stenge midlertidig adkomst |  | 1d | 2026-07-29 | 2026-07-29 | 25SF | 0d |  | Standard | Grunnentreprenør | 8h |

Notes:
- 1: Planlegging og godkjenning
- 2: Formell oppstart av prosjektet.
- 3: Tegninger og teknisk prosjektering.
- 4: Bestilling av lang leveringstid.
- 5: Materialleveranse til byggeplass.
- 6: Behandling av byggesøknad.
- 7: Milepæl for tillatelse.
- 8: Grunn, fundamenter og tett bygg
- 9: Etablering av rigg, gjerder og HMS-tiltak.
- 10: Utsjakting av byggegrop.
- 11: Overlapper delvis med graving.
- 12: Støpearbeider.
- 13: Teknisk ventetid før videre montasje.
- 14: Reising av hovedkonstruksjon.
- 15: Starter før bæresystemet er helt ferdig.
- 16: Milepæl for tett bygg.
- 17: Installasjoner, testing og overtakelse
- 18: Tekniske føringer og installasjoner.
- 19: Starter etter at tekniske fag har kommet i gang.
- 20: Etter at innvendige vegger er på plass.
- 21: Maling, gulvbelegg og ferdigstillelse.
- 22: Dokumentasjon ferdigstilles parallelt med testing.
- 23: Systemtester og funksjonskontroll.
- 24: Sluttkontroll og avviksavslutning.
- 25: Formell overtakelsesmilepæl.
- 26: Eksempel på SF-kobling.
