# Fiktivt byggprosjekt – Leilighetsbygg Solsiden (baseline + tracking)

Schedule from MS Project, 2026-04-06 to 2026-08-12, status date 2026-06-24, costs in kr, A marks actual dates.
Fiktiv gjennomføring med baseline og tracking pr. 24.06.2026
Fiktivt eksempel med baseline og tracking. Statusdato: 24.06.2026. Prognosert ferdig: 12.08.2026.

## Calendars

- Standard: Mon-Fri 08:00-12:00, 13:00-17:00; Sat-Sun off.

## Resources

| Resource | Rate |
| --- | --- |
| Prosjektleder | 950 |
| Prosjekteringsleder | 900 |
| Grunnentreprenør | 780 |
| Betonglag | 820 |
| Tømrerlag | 760 |
| VVS/Elektro-team | 840 |
| Maler/Gulvlag | 720 |
| Leverandør/Logistikk | 690 |
| Kontrollør | 980 |

## Schedule

| ID | WBS | Task | Type | Duration | Start | Finish | Predecessors | Complete | Remaining | Baseline start | Baseline finish | Baseline duration | Total slack | Calendar | Resources | Work | Actual work | Cost | Baseline cost |
| --- | --- | --- | --- | --- | --- | --- | --- | --- | --- | --- | --- | --- | --- | --- | --- | --- | --- | --- | --- |
| 1 | 1.1 | **Forprosjekt og myndigheter** |  | 30d | 2026-04-06 A | 2026-05-15 A |  | 100% |  | 2026-04-06 | 2026-05-12 | 27d |  | Standard |  | 344h | 344h |  | 2,842.4 |
| 2 | 1.1.1 | Oppstartsmøte |  | 1d | 2026-04-06 A | 2026-04-06 A |  | 100% |  | 2026-04-06 | 2026-04-06 | 1d |  | Standard | Prosjektleder | 8h | 8h |  | 76 |
| 3 | 1.1.2 | Prosjektering |  | 12d | 2026-04-07 A | 2026-04-22 A | 2 | 100% |  | 2026-04-07 | 2026-04-20 | 10d |  | Standard | Prosjekteringsleder | 88h | 88h |  | 720 |
| 4 | 1.1.3 | Bestille stål og takstoler |  | 4d | 2026-04-23 A | 2026-04-28 A | 3 | 100% |  | 2026-04-21 | 2026-04-24 | 4d |  | Standard | Prosjektleder | 32h | 32h |  | 304 |
| 5 | 1.1.4 | Levere stål og takstoler |  | 13d | 2026-04-29 A | 2026-05-15 A | 4 | 100% |  | 2026-04-27 | 2026-05-12 | 12d |  | Standard | Leverandør/Logistikk | 96h | 96h |  | 662.4 |
| 6 | 1.1.5 | Myndighetsbehandling |  | 16d | 2026-04-23 A | 2026-05-14 A | 3 | 100% |  | 2026-04-21 | 2026-05-11 | 15d |  | Standard | Prosjekteringsleder | 120h | 120h |  | 1,080 |
| 7 | 1.1.6 | Igangsettingstillatelse | milestone | 0d | 2026-05-14 A | 2026-05-14 A | 6 | 100% |  | 2026-05-11 | 2026-05-11 | 0d |  | Standard |  |  |  |  |  |
| 8 | 1.2 | **Bygging råbygg** |  | 34d | 2026-05-15 A | 2026-07-01 |  | 76% | 8.1d | 2026-05-12 | 2026-06-17 | 27d | 0d | Standard |  | 336h | 256h | 60,800 | 1,875.2 |
| 9 | 1.2.1 | Rigg og sikring |  | 3d | 2026-05-15 A | 2026-05-19 A | 7 | 100% |  | 2026-05-12 | 2026-05-14 | 3d |  | Standard | Grunnentreprenør | 24h | 24h |  | 187.2 |
| 10 | 1.2.2 | Graving byggegrop |  | 6d | 2026-05-20 A | 2026-05-27 A | 9 | 100% |  | 2026-05-15 | 2026-05-21 | 5d |  | Standard | Grunnentreprenør | 48h | 48h |  | 312 |
| 11 | 1.2.3 | Fundament/rebar/forskaling |  | 8d | 2026-05-26 A | 2026-06-04 A | 10SS+2d, 10FF | 100% |  | 2026-05-19 | 2026-05-26 | 6d |  | Standard | Betonglag | 64h | 64h |  | 393.6 |
| 12 | 1.2.4 | Støp fundament |  | 2d | 2026-06-05 A | 2026-06-08 A | 11 | 100% |  | 2026-05-27 | 2026-05-28 | 2d |  | Standard | Betonglag | 16h | 16h |  | 131.2 |
| 13 | 1.2.5 | Herdetid fundament |  | 5d | 2026-06-09 A | 2026-06-15 A | 12 | 100% |  | 2026-05-29 | 2026-06-04 | 5d |  | Standard |  | 40h | 40h |  |  |
| 14 | 1.2.6 | Montasje bæresystem |  | 12d | 2026-06-16 A | 2026-07-01 | 13, 5 | 58% | 5d | 2026-06-05 | 2026-06-16 | 8d | 0d | Standard | Tømrerlag | 96h | 56h | 30,400 | 486.4 |
| 15 | 1.2.7 | Tak og klimaskjerm |  | 6d | 2026-06-24 A | 2026-07-01 | 14SS+3d, 14FF | 17% | 5d | 2026-06-10 | 2026-06-17 | 6d | 0d | Standard | Tømrerlag | 48h | 8h | 30,400 | 364.8 |
| 16 | 1.2.8 | Fasade tett | milestone | 0d | 2026-07-01 | 2026-07-01 | 15 |  |  | 2026-06-17 | 2026-06-17 | 0d | 0d | Standard |  |  |  |  |  |
| 17 | 1.3 | **Tekniske fag og ferdigstillelse** |  | 30d | 2026-07-02 | 2026-08-12 |  |  |  | 2026-06-18 | 2026-07-29 | 30d | 0d | Standard |  | 360h |  | 283,760 | 2,703.2 |
| 18 | 1.3.1 | Råinstallasjoner VVS/elektro |  | 12d | 2026-07-02 | 2026-07-17 | 16 |  |  | 2026-06-18 | 2026-07-01 | 10d | 0d | Standard | VVS/Elektro-team | 96h |  | 80,640 | 672 |
| 19 | 1.3.2 | Innvendige vegger |  | 7d | 2026-07-06 | 2026-07-14 | 18SS+2d |  |  | 2026-06-22 | 2026-06-30 | 7d | 0d | Standard | Tømrerlag | 56h |  | 42,560 | 425.6 |
| 20 | 1.3.3 | Himling og gulv |  | 8d | 2026-07-15 | 2026-07-24 | 19 |  |  | 2026-07-01 | 2026-07-10 | 8d | 0d | Standard | Maler/Gulvlag | 64h |  | 46,080 | 460.8 |
| 21 | 1.3.4 | Overflatearbeider |  | 6d | 2026-07-27 | 2026-08-03 | 20 |  |  | 2026-07-13 | 2026-07-20 | 6d | 0d | Standard | Maler/Gulvlag | 48h |  | 34,560 | 345.6 |
| 22 | 1.3.5 | FDV-dokumentasjon |  | 4d | 2026-08-05 | 2026-08-10 | 18, 23FF |  |  | 2026-07-22 | 2026-07-27 | 4d | 0d | Standard | Prosjektleder | 32h |  | 30,400 | 304 |
| 23 | 1.3.6 | Tester og idriftsettelse |  | 5d | 2026-08-04 | 2026-08-10 | 18, 21 |  |  | 2026-07-21 | 2026-07-27 | 5d | 0d | Standard | Leverandør/Logistikk | 40h |  | 27,600 | 276 |
| 24 | 1.3.7 | Sluttkontroll |  | 2d | 2026-08-11 | 2026-08-12 | 23, 22 |  |  | 2026-07-28 | 2026-07-29 | 2d | 0d | Standard | Kontrollør | 16h |  | 15,680 | 156.8 |
| 25 | 1.3.8 | Overtakelse | milestone | 0d | 2026-08-12 | 2026-08-12 | 24 |  |  | 2026-07-29 | 2026-07-29 | 0d | 0d | Standard |  |  |  |  |  |
| 26 | 1.3.9 | Stenge midlertidig adkomst |  | 1d | 2026-08-12 | 2026-08-12 | 25SF |  |  | 2026-07-29 | 2026-07-29 | 1d | 0d | Standard | Grunnentreprenør | 8h |  | 6,240 | 62.4 |

Notes:
- 1: Planlegging og godkjenning
- 2: Formell oppstart av prosjektet.
- 3: Tegninger og teknisk prosjektering.
- 4: Bestilling av lang leveringstid.
- 5: Materialleveranse til byggeplass.
- 6: Fiktiv gjennomføring: myndighetsbehandling tok tre arbeidsdager lenger enn baseline.
- 7: Milepæl for tillatelse.
- 8: Grunn, fundamenter og tett bygg
- 9: Etablering av rigg, gjerder og HMS-tiltak.
- 10: Utsjakting av byggegrop.
- 11: Fiktiv gjennomføring: ekstra arbeid i byggegrop/forskaling ga forsinkelse og økt faktisk arbeid.
- 12: Støpearbeider.
- 13: Teknisk ventetid før videre montasje.
- 14: Fiktiv tracking: montasje er forsinket etter grunnarbeider. 58 % fullført pr. statusdato 24.06.2026.
- 15: Fiktiv tracking: takarbeid er startet parallelt med montasje gjennom SS+3d og FF-kobling. 17 % fullført pr. statusdato.
- 16: Milepæl for tett bygg.
- 17: Installasjoner, testing og overtakelse
- 18: Fiktiv prognose etter statusdato: råinstallasjoner forskjøvet som følge av sen fasadetetting.
- 19: Starter etter at tekniske fag har kommet i gang.
- 20: Etter at innvendige vegger er på plass.
- 21: Maling, gulvbelegg og ferdigstillelse.
- 22: Dokumentasjon ferdigstilles parallelt med testing.
- 23: Systemtester og funksjonskontroll.
- 24: Sluttkontroll og avviksavslutning.
- 25: Formell overtakelsesmilepæl.
- 26: Eksempel på SF-kobling.
