# Magical Devices V3

Schedule from MS Project, 2050-01-03 to 2052-08-01, costs in $.
DeeplyPracticalPM.com

## Calendars

- Standard: Mon-Fri 08:00-12:00, 13:00-17:00; Sat-Sun off.

## Resources

| Resource | Group | Unit | Rate |
| --- | --- | --- | --- |
| Unassigned |  |  |  |
| Charles Wallace | 3.1-Project Management |  | 150 |
| Kong Qiu | 2.1-Project Leads |  | 125 |
| Mary Sperling | 2.1-Project Leads |  | 125 |
| Byomkesh Bakshi | 2.1-Project Leads |  | 125 |
| Andre Young | 2.1-Project Leads |  | 125 |
| Cathy Kerr | 2.1-Project Leads |  | 125 |
| Son Goku | 2.1-Project Leads |  | 125 |
| Heidi Geis | 2.1-Project Leads |  | 125 |
| Irwin Fletcher | 2.1-Project Leads |  | 125 |
| Jean Cunliffe | 2.1-Project Leads |  | 125 |
| Henry Kiku | 2.1-Project Leads |  | 125 |
| Ellie Arroway | 3.1-Project Management |  | 110 |
| Jonathan Livingston | 3.1-Project Management |  | 110 |
| Business-Process-Team | 2.2-Project Team |  | 110 |
| System-Team | 2.2-Project Team |  | 110 |
| Software-Team | 2.2-Project Team |  | 110 |
| Hardware-Team | 2.2-Project Team |  | 110 |
| Security-Team | 2.2-Project Team |  | 110 |
| QA-Team | 2.2-Project Team |  | 110 |
| Implementation-Team | 2.2-Project Team |  | 110 |
| Facilities-Team | 2.2-Project Team |  | 110 |
| Training-Team | 2.2-Project Team |  | 110 |
| Support-Team | 2.2-Project Team |  | 110 |
| Risk Budget | 3.2-Risk Budget |  |  |
| Equipment-Staging | 1.3-Material-Hardware | Each | 600000 |
| Production Software | 1.4-Material-Software | Line | 1100000 |
| Facility Build Contract | 1.1-Material-Facility | Contract | 9250000 |
| Equipment-Piece Build | 1.3-Material-Hardware | Each | 600000 |
| Control Station HW | 1.3-Material-Hardware | Each | 200000 |
| Management Station HW | 1.3-Material-Hardware | Each | 100000 |
| Equipment-QA | 1.3-Material-Hardware | Each | 600000 |
| Equipment-Finishing | 1.3-Material-Hardware | Each | 600000 |
| Equipment-Assembly | 1.3-Material-Hardware | Each | 600000 |
| Control Station SW | 1.4-Material-Software | Each | 300000 |
| Management Station SW | 1.4-Material-Software | Each | 200000 |
| Magic Dust | 1.5-Material-Magic Dust | Gram | 777 |
| Building Material Production | 1.2-Material-Building | Line | 100000 |
| Building Material Staging | 1.2-Material-Building | Each | 50000 |
| Building Material Shipping | 1.2-Material-Building | Each | 40000 |
| Building Material Stations | 1.2-Material-Building | Each | 75000 |
| Building Material Other | 1.2-Material-Building | Various | 100000 |
| Security Certification Consultant | 2.3-Consultant |  | 200 |

## Schedule

| ID | WBS | Task | Duration | Start | Finish | Predecessors | Baseline start | Baseline finish | Baseline duration | Total slack | Free slack | Resources | Work | Cost | Baseline cost | Text1 | Text2 |
| --- | --- | --- | --- | --- | --- | --- | --- | --- | --- | --- | --- | --- | --- | --- | --- | --- | --- |
| 1 | 1 | **Magical Devices V3 Project** | 674d | 2050-01-03 | 2052-08-01 |  | 2050-01-03 | 2052-08-01 | 674d | 0d |  |  | 128056h | 44,467,360 | 44,467,360 | MDV3 | CA1000 |
| 2 | 1.1 | **Business Process** | 60d | 2050-01-04 | 2050-03-28 |  | 2050-01-04 | 2050-03-28 | 60d | 0d |  | Kong Qiu | 2880h | 324,000 | 324,000 | BPR1 | CA2000 |
| 3 | 1.1.1 | **Business Process As-IS** | 15d | 2050-01-04 | 2050-01-24 |  | 2050-01-04 | 2050-01-24 | 15d | 15d |  |  | 240h | 26,400 | 26,400 | BPRA1 | CA3000 |
| 4 | 1.1.1.1 | Business Processes As-Is Draft | 10d | 2050-01-04 | 2050-01-17 | 166 | 2050-01-04 | 2050-01-17 | 10d | 15d | 0d | Business-Process-Team [200%] | 160h | 17,600 | 17,600 | BPRA1.1 | CA4000 |
| 5 | 1.1.1.2 | Business Processes As-Is Final | 5d | 2050-01-18 | 2050-01-24 | 4 | 2050-01-18 | 2050-01-24 | 5d | 15d |  | Business-Process-Team [200%] | 80h | 8,800 | 8,800 | BPRA1.2 | CA5000 |
| 6 | 1.1.2 | **Business Process To-Be** | 30d | 2050-01-04 | 2050-02-14 |  | 2050-01-04 | 2050-02-14 | 30d | 0d |  |  | 960h | 105,600 | 105,600 | BPRT1 | CA6000 |
| 7 | 1.1.2.1 | Business Processes To-Be Draft | 20d | 2050-01-04 | 2050-01-31 | 166 | 2050-01-04 | 2050-01-31 | 20d | 0d |  | Business-Process-Team [400%] | 640h | 70,400 | 70,400 | BPRT1.1 | CA7000 |
| 8 | 1.1.2.2 | Business Processes To-Be Final | 10d | 2050-02-01 | 2050-02-14 | 7 | 2050-02-01 | 2050-02-14 | 10d | 0d |  | Business-Process-Team [400%] | 320h | 35,200 | 35,200 | BPRT1.2 | CA8000 |
| 9 | 1.1.3 | **Gap Analysis** | 30d | 2050-02-15 | 2050-03-28 |  | 2050-02-15 | 2050-03-28 | 30d | 0d |  |  | 1200h | 132,000 | 132,000 | GAN1 | CA9000 |
| 10 | 1.1.3.1 | Gap Analysis Draft | 20d | 2050-02-15 | 2050-03-14 | 5, 8 | 2050-02-15 | 2050-03-14 | 20d | 0d |  | Business-Process-Team [500%] | 800h | 88,000 | 88,000 | GAN1.1 | CA10000 |
| 11 | 1.1.3.2 | Gap Analysis Final | 10d | 2050-03-15 | 2050-03-28 | 10 | 2050-03-15 | 2050-03-28 | 10d | 0d |  | Business-Process-Team [500%] | 400h | 44,000 | 44,000 | GAN1.2 | CA11000 |
| 12 | 1.2 | **System** | 370d | 2050-03-29 | 2051-08-28 |  | 2050-03-29 | 2051-08-28 | 370d | 0d |  | Mary Sperling | 8448h | 978,000 | 978,000 | SYS1 | CA12000 |
| 13 | 1.2.1 | **System Architecture** | 30d | 2050-03-29 | 2050-05-09 |  | 2050-03-29 | 2050-05-09 | 30d | 0d |  |  | 960h | 105,600 | 105,600 | SYA1 | CA13000 |
| 14 | 1.2.1.1 | System Architecture Draft | 20d | 2050-03-29 | 2050-04-25 | 11 | 2050-03-29 | 2050-04-25 | 20d | 0d |  | System-Team [400%] | 640h | 70,400 | 70,400 | SYA1.1 | CA14000 |
| 15 | 1.2.1.2 | System Architecture Final | 10d | 2050-04-26 | 2050-05-09 | 14 | 2050-04-26 | 2050-05-09 | 10d | 0d |  | System-Team [400%] | 320h | 35,200 | 35,200 | SYA1.2 | CA15000 |
| 16 | 1.2.2 | **System Test Planning** | 115d | 2050-05-10 | 2050-10-17 |  | 2050-05-10 | 2050-10-17 | 115d | 55d |  |  | 1280h | 140,800 | 140,800 | SYTP1 | CA16000 |
| 17 | 1.2.2.1 | System Test Plan | 10d | 2050-05-10 | 2050-05-23 | 15 | 2050-05-10 | 2050-05-23 | 10d | 55d | 20d | System-Team [200%] | 160h | 17,600 | 17,600 | SYTP1.1 | CA17000 |
| 18 | 1.2.2.2 | System Test Procedures Draft 1 | 20d | 2050-08-30 | 2050-09-26 | 17, 35, 54 | 2050-08-30 | 2050-09-26 | 20d | 160d | 0d | System-Team [400%] | 640h | 70,400 | 70,400 | SYTP1.2 | CA18000 |
| 19 | 1.2.2.3 | System Test Procedures Draft 2 | 10d | 2050-09-27 | 2050-10-10 | 18, 36, 55 | 2050-09-27 | 2050-10-10 | 10d | 160d | 0d | System-Team [400%] | 320h | 35,200 | 35,200 | SYTP1.3 | CA19000 |
| 20 | 1.2.2.4 | System Test Procedures Final | 5d | 2050-10-11 | 2050-10-17 | 19, 37, 56 | 2050-10-11 | 2050-10-17 | 5d | 160d | 0d | System-Team [400%] | 160h | 17,600 | 17,600 | SYTP1.4 | CA20000 |
| 21 | 1.2.3 | **System Build** | 65d | 2051-05-30 | 2051-08-28 |  | 2051-05-30 | 2051-08-28 | 65d | 0d |  |  | 3248h | 361,600 | 361,600 | SYB1 | CA21000 |
| 22 | 1.2.3.1 | System Build 1 | 20d | 2051-05-30 | 2051-06-26 | 20, 43, 64 | 2051-05-30 | 2051-06-26 | 20d | 0d |  | System-Team [800%]; Security Certification Consultant [10%] | 1296h | 144,000 | 144,000 | SYB1.1 | CA22000 |
| 23 | 1.2.3.2 | System Build 2 | 20d | 2051-07-11 | 2051-08-07 | 104 | 2051-07-11 | 2051-08-07 | 20d | 0d |  | System-Team [800%]; Security Certification Consultant [10%] | 1296h | 144,000 | 144,000 | SYB1.2 | CA23000 |
| 24 | 1.2.3.3 | System Build Final | 10d | 2051-08-15 | 2051-08-28 | 105 | 2051-08-15 | 2051-08-28 | 10d | 0d |  | System-Team [800%]; Security Certification Consultant [20%] | 656h | 73,600 | 73,600 | SYB1.3 | CA24000 |

Notes:
- 1: More information can be found in the Deeply Practical Project Management (DPPM) reference book and online course available at IFPPM.org. / In particular see the chapter Planning: Scheduling. / The entire Magical Devices Version 3 project can be found at: IFPPM.org. / See the document How To Plan Your Project With Microsoft Office at IFPPM.org for / description of how the elements of this schedule were created, and the reports were imported into the MDV3 Project Management Plan. / © 2024-08-10 William Stewart / Institute For Practical Project Management

| ID | WBS | Task | Duration | Start | Finish | Predecessors | Baseline start | Baseline finish | Baseline duration | Total slack | Free slack | Resources | Work | Cost | Baseline cost | Text1 | Text2 |
| --- | --- | --- | --- | --- | --- | --- | --- | --- | --- | --- | --- | --- | --- | --- | --- | --- | --- |
| 25 | 1.3 | **Hardware** | 220d | 2050-05-10 | 2051-03-13 |  | 2050-05-10 | 2051-03-13 | 220d | 55d |  | Andre Young | 10760h | 11,143,100 | 11,143,100 | HW1 | CA25000 |
| 26 | 1.3.1 | **Hardware Planning** | 30d | 2050-05-10 | 2050-06-20 |  | 2050-05-10 | 2050-06-20 | 30d | 75d |  |  | 960h | 105,600 | 105,600 | HWP1 | CA26000 |
| 27 | 1.3.1.1 | Hardware Detailed Requirements | 20d | 2050-05-10 | 2050-06-06 | 15 | 2050-05-10 | 2050-06-06 | 20d | 75d | 0d | Hardware-Team [500%] | 800h | 88,000 | 88,000 | HWP1.1 | CA27000 |
| 28 | 1.3.1.2 | Hardware Development Plan | 10d | 2050-06-07 | 2050-06-20 | 27 | 2050-06-07 | 2050-06-20 | 10d | 75d | 0d | Hardware-Team [200%] | 160h | 17,600 | 17,600 | HWP1.2 | CA28000 |
| 29 | 1.3.2 | **Hardware Design** | 35d | 2050-07-19 | 2050-09-05 |  | 2050-07-19 | 2050-09-05 | 35d | 55d |  |  | 1400h | 154,000 | 154,000 | HWD1 | CA29000 |
| 30 | 1.3.2.1 | Hardware Design Draft 1 | 20d | 2050-07-19 | 2050-08-15 | 28, 49, 68 | 2050-07-19 | 2050-08-15 | 20d | 55d | 0d | Hardware-Team [500%] | 800h | 88,000 | 88,000 | HWD1.1 | CA30000 |
| 31 | 1.3.2.2 | Hardware Design Draft 2 | 10d | 2050-08-16 | 2050-08-29 | 50, 30 | 2050-08-16 | 2050-08-29 | 10d | 55d | 0d | Hardware-Team [500%] | 400h | 44,000 | 44,000 | HWD1.2 | CA31000 |
| 32 | 1.3.2.3 | Hardware Design Final | 5d | 2050-08-30 | 2050-09-05 | 31, 51 | 2050-08-30 | 2050-09-05 | 5d | 55d | 0d | Hardware-Team [500%] | 200h | 22,000 | 22,000 | HWD1.3 | CA32000 |
| 33 | 1.3.3 | **Hardware Test Planning** | 65d | 2050-06-21 | 2050-09-19 |  | 2050-06-21 | 2050-09-19 | 65d | 175d |  |  | 880h | 96,800 | 96,800 | HWTP1 | CA33000 |
| 34 | 1.3.3.1 | Hardware Test Plan | 5d | 2050-06-21 | 2050-06-27 | 17, 28 | 2050-06-21 | 2050-06-27 | 5d | 195d | 35d | Hardware-Team [200%] | 80h | 8,800 | 8,800 | HWTP1.1 | CA34000 |
| 35 | 1.3.3.2 | Hardware Test Procedures Draft 1 | 10d | 2050-08-16 | 2050-08-29 | 34, 30 | 2050-08-16 | 2050-08-29 | 10d | 160d | 0d | Hardware-Team [400%] | 320h | 35,200 | 35,200 | HWTP1.2 | CA35000 |
| 36 | 1.3.3.3 | Hardware Test Procedures Draft 2 | 10d | 2050-08-30 | 2050-09-12 | 35, 31 | 2050-08-30 | 2050-09-12 | 10d | 170d | 0d | Hardware-Team [400%] | 320h | 35,200 | 35,200 | HWTP1.3 | CA36000 |
| 37 | 1.3.3.4 | Hardware Test Procedures Final | 5d | 2050-09-13 | 2050-09-19 | 36, 32 | 2050-09-13 | 2050-09-19 | 5d | 175d | 15d | Hardware-Team [400%] | 160h | 17,600 | 17,600 | HWTP1.4 | CA37000 |
| 38 | 1.3.4 | **Hardware Build** | 135d | 2050-09-06 | 2051-03-13 |  | 2050-09-06 | 2051-03-13 | 135d | 55d |  |  | 5760h | 10,566,700 | 10,566,700 | HWB1 | CA38000 |
| 39 | 1.3.4.1 | Hardware Procurement | 20d | 2050-09-06 | 2050-10-03 | 32 | 2050-09-06 | 2050-10-03 | 20d | 55d | 0d | Hardware-Team [200%]; Equipment-Staging [3 Each]; Equipment-Piece Build [3 Each]; Equipment-Assembly [3 Each]; Equipment-Finishing [3 Each]; Equipment-QA [3 Each]; Management Station HW [1 Each]; Control Station HW [3 Each]; Magic Dust [300 Gram] | 320h | 9,968,300 | 9,968,300 | HWB1.1 | CA39000 |
| 40 | 1.3.4.2 | Hardware Build 1 | 30d | 2050-10-04 | 2050-11-14 | 39 | 2050-10-04 | 2050-11-14 | 30d | 55d | 0d | Hardware-Team [800%] | 1920h | 211,200 | 211,200 | HWB1.2 | CA40000 |
| 41 | 1.3.4.3 | Hardware Build 2 | 25d | 2050-11-29 | 2051-01-02 | 94 | 2050-11-29 | 2051-01-02 | 25d | 55d | 0d | Hardware-Team [800%] | 1600h | 176,000 | 176,000 | HWB1.3 | CA41000 |
| 42 | 1.3.4.4 | Hardware Build 3 | 20d | 2051-01-17 | 2051-02-13 | 95 | 2051-01-17 | 2051-02-13 | 20d | 55d | 0d | Hardware-Team [800%] | 1280h | 140,800 | 140,800 | HWB1.4 | CA42000 |
| 43 | 1.3.4.5 | Hardware Build Final | 10d | 2051-02-28 | 2051-03-13 | 96 | 2051-02-28 | 2051-03-13 | 10d | 55d |  | Hardware-Team [800%] | 640h | 70,400 | 70,400 | HWB1.5 | CA43000 |
| 44 | 1.4 | **Software** | 275d | 2050-05-10 | 2051-05-29 |  | 2050-05-10 | 2051-05-29 | 275d | 0d |  | Byomkesh Bakshi | 24280h | 7,103,800 | 7,103,800 | SW1 | CA44000 |
| 45 | 1.4.1 | **Software Planning** | 30d | 2050-05-10 | 2050-06-20 |  | 2050-05-10 | 2050-06-20 | 30d | 0d |  |  | 960h | 105,600 | 105,600 | SWP1 | CA45000 |
| 46 | 1.4.1.1 | Software Detailed Requirements | 20d | 2050-05-10 | 2050-06-06 | 15 | 2050-05-10 | 2050-06-06 | 20d | 0d |  | Software-Team [500%] | 800h | 88,000 | 88,000 | SWP1.1 | CA46000 |
| 47 | 1.4.1.2 | Software Development Plan | 10d | 2050-06-07 | 2050-06-20 | 46 | 2050-06-07 | 2050-06-20 | 10d | 0d |  | Software-Team [200%] | 160h | 17,600 | 17,600 | SWP1.2 | CA47000 |
| 48 | 1.4.2 | **Software Design** | 50d | 2050-06-21 | 2050-08-29 |  | 2050-06-21 | 2050-08-29 | 50d | 0d |  |  | 3200h | 352,000 | 352,000 | SWD1 | CA48000 |
| 49 | 1.4.2.1 | Software Design Draft 1 | 20d | 2050-06-21 | 2050-07-18 | 68, 47 | 2050-06-21 | 2050-07-18 | 20d | 0d |  | Software-Team [800%] | 1280h | 140,800 | 140,800 | SWD1.1 | CA49000 |
| 50 | 1.4.2.2 | Software Design Draft 2 | 20d | 2050-07-19 | 2050-08-15 | 49 | 2050-07-19 | 2050-08-15 | 20d | 0d |  | Software-Team [800%] | 1280h | 140,800 | 140,800 | SWD1.2 | CA50000 |
| 51 | 1.4.2.3 | Software Design Final | 10d | 2050-08-16 | 2050-08-29 | 50 | 2050-08-16 | 2050-08-29 | 10d | 0d |  | Software-Team [800%] | 640h | 70,400 | 70,400 | SWD1.3 | CA51000 |

| ID | WBS | Task | Duration | Start | Finish | Predecessors | Baseline start | Baseline finish | Baseline duration | Total slack | Free slack | Resources | Work | Cost | Baseline cost | Text1 | Text2 |
| --- | --- | --- | --- | --- | --- | --- | --- | --- | --- | --- | --- | --- | --- | --- | --- | --- | --- |
| 52 | 1.4.3 | **Software Test Planning** | 70d | 2050-06-21 | 2050-09-26 |  | 2050-06-21 | 2050-09-26 | 70d | 20d |  |  | 2480h | 272,800 | 272,800 | SWTP1 | CA52000 |
| 53 | 1.4.3.1 | Software Test Plan | 5d | 2050-06-21 | 2050-06-27 | 47, 17 | 2050-06-21 | 2050-06-27 | 5d | 35d | 15d | Software-Team [200%] | 80h | 8,800 | 8,800 | SWTP1.1 | CA53000 |
| 54 | 1.4.3.2 | Software Test Procedures Draft 1 | 20d | 2050-07-19 | 2050-08-15 | 53, 49 | 2050-07-19 | 2050-08-15 | 20d | 20d | 0d | Software-Team [600%] | 960h | 105,600 | 105,600 | SWTP1.2 | CA54000 |
| 55 | 1.4.3.3 | Software Test Procedures Draft 2 | 20d | 2050-08-16 | 2050-09-12 | 54, 50 | 2050-08-16 | 2050-09-12 | 20d | 20d | 0d | Software-Team [600%] | 960h | 105,600 | 105,600 | SWTP1.3 | CA55000 |
| 56 | 1.4.3.4 | Software Test Procedures Final | 10d | 2050-09-13 | 2050-09-26 | 55, 51 | 2050-09-13 | 2050-09-26 | 10d | 20d | 10d | Software-Team [600%] | 480h | 52,800 | 52,800 | SWTP1.4 | CA56000 |
| 57 | 1.4.4 | **Software Build** | 195d | 2050-08-30 | 2051-05-29 |  | 2050-08-30 | 2051-05-29 | 195d | 0d |  |  | 15440h | 6,098,400 | 6,098,400 | SWB1 | CA57000 |
| 58 | 1.4.4.1 | Software Procurement | 10d | 2050-08-30 | 2050-09-12 | 51 | 2050-08-30 | 2050-09-12 | 10d | 0d |  | Software-Team; Production Software [3 Line]; Management Station SW [1 Each]; Control Station SW [3 Each] | 80h | 4,408,800 | 4,408,800 | SWB1.1 | CA58000 |
| 59 | 1.4.4.2 | Software Sprint 1 | 30d | 2050-09-13 | 2050-10-24 | 58 | 2050-09-13 | 2050-10-24 | 30d | 0d |  | Software-Team [1200%] | 2880h | 316,800 | 316,800 | SWB1.2 | CA59000 |
| 60 | 1.4.4.3 | Software Sprint 2 | 30d | 2050-11-01 | 2050-12-12 | 98 | 2050-11-01 | 2050-12-12 | 30d | 0d |  | Software-Team [1200%] | 2880h | 316,800 | 316,800 | SWB1.3 | CA60000 |
| 61 | 1.4.4.4 | Software Sprint 3 | 30d | 2050-12-20 | 2051-01-30 | 99 | 2050-12-20 | 2051-01-30 | 30d | 0d |  | Software-Team [1200%] | 2880h | 316,800 | 316,800 | SWB1.4 | CA61000 |
| 62 | 1.4.4.5 | Software Sprint 4 | 30d | 2051-02-07 | 2051-03-20 | 100 | 2051-02-07 | 2051-03-20 | 30d | 0d |  | Software-Team [1200%] | 2880h | 316,800 | 316,800 | SWB1.5 | CA62000 |
| 63 | 1.4.4.6 | Software Sprint 5 | 30d | 2051-03-28 | 2051-05-08 | 101 | 2051-03-28 | 2051-05-08 | 30d | 0d |  | Software-Team [1200%] | 2880h | 316,800 | 316,800 | SWB1.6 | CA63000 |
| 64 | 1.4.4.7 | Software Final | 10d | 2051-05-16 | 2051-05-29 | 102 | 2051-05-16 | 2051-05-29 | 10d | 0d |  | Software-Team [1200%] | 960h | 105,600 | 105,600 | SWB1.7 | CA64000 |
| 65 | 1.5 | **Security** | 125d | 2050-05-10 | 2050-10-31 |  | 2050-05-10 | 2050-10-31 | 125d | 5d |  | Cathy Kerr | 3004h | 360,200 | 360,200 | SEC1 | CA65000 |
| 66 | 1.5.1 | **Security Design** | 25d | 2050-05-10 | 2050-06-13 |  | 2050-05-10 | 2050-06-13 | 25d | 5d |  |  | 876h | 103,200 | 103,200 | SECD1 | CA66000 |
| 67 | 1.5.1.1 | Security Detailed Requirements | 10d | 2050-05-10 | 2050-05-23 | 15 | 2050-05-10 | 2050-05-23 | 10d | 5d | 0d | Security-Team [400%]; Security Certification Consultant [50%] | 360h | 43,200 | 43,200 | SECD1.1 | CA67000 |
| 68 | 1.5.1.2 | Security Architecture | 15d | 2050-05-24 | 2050-06-13 | 67 | 2050-05-24 | 2050-06-13 | 15d | 5d | 0d | Security-Team [400%]; Security Certification Consultant [30%] | 516h | 60,000 | 60,000 | SECD1.2 | CA68000 |
| 69 | 1.5.2 | **Security Test Planning** | 100d | 2050-06-14 | 2050-10-31 |  | 2050-06-14 | 2050-10-31 | 100d | 215d |  |  | 1128h | 132,000 | 132,000 | SECTP1 | CA69000 |
| 70 | 1.5.2.1 | Security Test Plan | 5d | 2050-06-14 | 2050-06-20 | 68 | 2050-06-14 | 2050-06-20 | 5d | 280d | 55d | Security-Team [200%]; Security Certification Consultant [20%] | 88h | 10,400 | 10,400 | SECTP1.1 | CA70000 |
| 71 | 1.5.2.2 | Security Test Procedures Draft 1 | 20d | 2050-09-06 | 2050-10-03 | 32, 51, 70 | 2050-09-06 | 2050-10-03 | 20d | 225d | 10d | Security-Team [400%]; Security Certification Consultant [25%] | 680h | 78,400 | 78,400 | SECTP1.2 | CA71000 |
| 72 | 1.5.2.3 | Security Test Procedures Final | 10d | 2050-10-18 | 2050-10-31 | 71, 20 | 2050-10-18 | 2050-10-31 | 10d | 215d |  | Security-Team [400%]; Security Certification Consultant [50%] | 360h | 43,200 | 43,200 | SECTP1.3 | CA72000 |
| 73 | 1.6 | **Facility** | 380d | 2050-05-10 | 2051-10-23 |  | 2050-05-10 | 2051-10-23 | 380d | 5d |  | Irwin Fletcher | 14400h | 11,444,600 | 11,444,600 | FAC1 | CA73000 |
| 74 | 1.6.1 | **Facilities Planning** | 40d | 2050-05-10 | 2050-07-04 |  | 2050-05-10 | 2050-07-04 | 40d | 120d |  |  | 1120h | 123,200 | 123,200 | FACP1 | CA74000 |
| 75 | 1.6.1.1 | Facilities Detailed Requirements | 20d | 2050-05-10 | 2050-06-06 | 15 | 2050-05-10 | 2050-06-06 | 20d | 120d | 0d | Facilities-Team [500%] | 800h | 88,000 | 88,000 | FACP1.1 | CA75000 |
| 76 | 1.6.1.2 | Facilities Build Plan | 20d | 2050-06-07 | 2050-07-04 | 75 | 2050-06-07 | 2050-07-04 | 20d | 120d | 0d | Facilities-Team [200%] | 320h | 35,200 | 35,200 | FACP1.2 | CA76000 |

| ID | WBS | Task | Duration | Start | Finish | Predecessors | Baseline start | Baseline finish | Baseline duration | Total slack | Free slack | Resources | Work | Cost | Baseline cost | Text1 | Text2 |
| --- | --- | --- | --- | --- | --- | --- | --- | --- | --- | --- | --- | --- | --- | --- | --- | --- | --- |
| 77 | 1.6.2 | **Facilities Design** | 70d | 2050-07-05 | 2050-10-10 |  | 2050-07-05 | 2050-10-10 | 70d | 110d |  |  | 2880h | 316,800 | 316,800 | FACD1 | CA77000 |
| 78 | 1.6.2.1 | Facilities Design Draft 1 | 20d | 2050-07-05 | 2050-08-01 | 76 | 2050-07-05 | 2050-08-01 | 20d | 120d | 10d | Facilities-Team [600%] | 960h | 105,600 | 105,600 | FACD1.1 | CA78000 |
| 79 | 1.6.2.2 | Facilities Design Draft 2 | 20d | 2050-08-16 | 2050-09-12 | 30, 78 | 2050-08-16 | 2050-09-12 | 20d | 110d | 0d | Facilities-Team [600%] | 960h | 105,600 | 105,600 | FACD1.2 | CA79000 |
| 80 | 1.6.2.3 | Facilities Design Draft 3 | 10d | 2050-09-13 | 2050-09-26 | 31, 79 | 2050-09-13 | 2050-09-26 | 10d | 110d | 0d | Facilities-Team [600%] | 480h | 52,800 | 52,800 | FACD1.3 | CA80000 |
| 81 | 1.6.2.4 | Facilities Design Final | 10d | 2050-09-27 | 2050-10-10 | 32, 80 | 2050-09-27 | 2050-10-10 | 10d | 110d | 0d | Facilities-Team [600%] | 480h | 52,800 | 52,800 | FACD1.4 | CA81000 |
| 82 | 1.6.3 | **Facilities Build** | 270d | 2050-10-11 | 2051-10-23 |  | 2050-10-11 | 2051-10-23 | 270d | 5d |  |  | 7360h | 10,624,600 | 10,624,600 | FACB1 | CA82000 |
| 83 | 1.6.3.1 | Facilities Procurement | 20d | 2050-10-11 | 2050-11-07 | 81 | 2050-10-11 | 2050-11-07 | 20d | 110d | 5d | Facility Build Contract [1 Contract]; Facilities-Team [200%]; Building Material Production [3 Line]; Building Material Staging [1 Each]; Building Material Shipping [1 Each]; Building Material Stations [1 Each]; Building Material Other [1 Various] | 320h | 9,850,200 | 9,850,200 | FACB1.1 | CA83000 |
| 84 | 1.6.3.2 | Facilities Build 1 | 20d | 2050-11-15 | 2050-12-12 | 40, 83 | 2050-11-15 | 2050-12-12 | 20d | 105d | 0d | Facilities-Team [800%] | 1280h | 140,800 | 140,800 | FACB1.2 | CA84000 |
| 85 | 1.6.3.3 | Facilities Build 2 | 20d | 2051-01-03 | 2051-01-30 | 41, 113 | 2051-01-03 | 2051-01-30 | 20d | 95d | 0d | Facilities-Team [800%] | 1280h | 140,800 | 140,800 | FACB1.3 | CA85000 |
| 86 | 1.6.3.4 | Facilities Build 3 | 20d | 2051-02-14 | 2051-03-13 | 42, 114 | 2051-02-14 | 2051-03-13 | 20d | 90d | 0d | Facilities-Team [800%] | 1280h | 140,800 | 140,800 | FACB1.4 | CA86000 |
| 87 | 1.6.3.5 | Facilities Build 4 | 10d | 2051-05-30 | 2051-06-12 | 43, 64, 115 | 2051-05-30 | 2051-06-12 | 10d | 40d | 0d | Facilities-Team [800%] | 640h | 70,400 | 70,400 | FACB1.5 | CA87000 |
| 88 | 1.6.3.6 | Facilities Build 5 | 10d | 2051-06-27 | 2051-07-10 | 22, 116 | 2051-06-27 | 2051-07-10 | 10d | 35d | 0d | Facilities-Team [800%] | 640h | 70,400 | 70,400 | FACB1.6 | CA88000 |
| 89 | 1.6.3.7 | Facilities Build 6 | 10d | 2051-08-08 | 2051-08-21 | 23, 117 | 2051-08-08 | 2051-08-21 | 10d | 20d | 0d | Facilities-Team [800%] | 640h | 70,400 | 70,400 | FACB1.7 | CA89000 |
| 90 | 1.6.3.8 | Facilities Build 7 | 10d | 2051-08-29 | 2051-09-11 | 24, 118 | 2051-08-29 | 2051-09-11 | 10d | 20d | 0d | Facilities-Team [800%] | 640h | 70,400 | 70,400 | FACB1.8 | CA90000 |
| 91 | 1.6.3.9 | Facilities Build Final | 10d | 2051-10-10 | 2051-10-23 | 119, 111 | 2051-10-10 | 2051-10-23 | 10d | 5d |  | Facilities-Team [800%] | 640h | 70,400 | 70,400 | FACB1.9 | CA91000 |
| 92 | 1.7 | **Quality Assurance** | 250d | 2050-10-25 | 2051-10-09 |  | 2050-10-25 | 2051-10-09 | 250d | 0d |  | Son Goku | 6520h | 758,000 | 758,000 | QA1 | CA92000 |
| 93 | 1.7.1 | **Hardware Test** | 75d | 2050-11-15 | 2051-02-27 |  | 2050-11-15 | 2051-02-27 | 75d | 55d |  |  | 960h | 105,600 | 105,600 | QAHW1 | CA93000 |
| 94 | 1.7.1.1 | Hardware Build 1 Test | 10d | 2050-11-15 | 2050-11-28 | 40 | 2050-11-15 | 2050-11-28 | 10d | 55d | 0d | QA-Team [400%] | 320h | 35,200 | 35,200 | QAHW1.1 | CA94000 |
| 95 | 1.7.1.2 | Hardware Build 2 Test | 10d | 2051-01-03 | 2051-01-16 | 41 | 2051-01-03 | 2051-01-16 | 10d | 55d | 0d | QA-Team [400%] | 320h | 35,200 | 35,200 | QAHW1.2 | CA95000 |
| 96 | 1.7.1.3 | Hardware Build 3 Test | 10d | 2051-02-14 | 2051-02-27 | 42 | 2051-02-14 | 2051-02-27 | 10d | 55d | 0d | QA-Team [400%] | 320h | 35,200 | 35,200 | QAHW1.3 | CA96000 |
| 97 | 1.7.2 | **Software Test** | 145d | 2050-10-25 | 2051-05-15 |  | 2050-10-25 | 2051-05-15 | 145d | 0d |  |  | 1200h | 132,000 | 132,000 | QASW1 | CA97000 |
| 98 | 1.7.2.1 | Software Sprint 1 Test | 5d | 2050-10-25 | 2050-10-31 | 59, 56 | 2050-10-25 | 2050-10-31 | 5d | 0d |  | QA-Team [600%] | 240h | 26,400 | 26,400 | QASW1.1 | CA98000 |
| 99 | 1.7.2.2 | Software Sprint 2 Test | 5d | 2050-12-13 | 2050-12-19 | 60 | 2050-12-13 | 2050-12-19 | 5d | 0d |  | QA-Team [600%] | 240h | 26,400 | 26,400 | QASW1.2 | CA99000 |
| 100 | 1.7.2.3 | Software Sprint 3 Test | 5d | 2051-01-31 | 2051-02-06 | 61 | 2051-01-31 | 2051-02-06 | 5d | 0d |  | QA-Team [600%] | 240h | 26,400 | 26,400 | QASW1.3 | CA100000 |
| 101 | 1.7.2.4 | Software Sprint 4 Test | 5d | 2051-03-21 | 2051-03-27 | 62 | 2051-03-21 | 2051-03-27 | 5d | 0d |  | QA-Team [600%] | 240h | 26,400 | 26,400 | QASW1.4 | CA101000 |
| 102 | 1.7.2.5 | Software Sprint 5 Test | 5d | 2051-05-09 | 2051-05-15 | 63 | 2051-05-09 | 2051-05-15 | 5d | 0d |  | QA-Team [600%] | 240h | 26,400 | 26,400 | QASW1.5 | CA102000 |

| ID | WBS | Task | Duration | Start | Finish | Predecessors | Baseline start | Baseline finish | Baseline duration | Total slack | Free slack | Resources | Work | Cost | Baseline cost | Text1 | Text2 |
| --- | --- | --- | --- | --- | --- | --- | --- | --- | --- | --- | --- | --- | --- | --- | --- | --- | --- |
| 103 | 1.7.3 | **System Test** | 35d | 2051-06-27 | 2051-08-14 |  | 2051-06-27 | 2051-08-14 | 35d | 0d |  |  | 480h | 52,800 | 52,800 | QASY1 | CA103000 |
| 104 | 1.7.3.1 | System Build 1 Test | 10d | 2051-06-27 | 2051-07-10 | 22 | 2051-06-27 | 2051-07-10 | 10d | 0d |  | QA-Team [400%] | 320h | 35,200 | 35,200 | QASY1.1 | CA104000 |
| 105 | 1.7.3.2 | System Build 2 Test | 5d | 2051-08-08 | 2051-08-14 | 23 | 2051-08-08 | 2051-08-14 | 5d | 0d |  | QA-Team [400%] | 160h | 17,600 | 17,600 | QASY1.2 | CA105000 |
| 106 | 1.7.4 | **Security Test** | 10d | 2051-08-29 | 2051-09-11 |  | 2051-08-29 | 2051-09-11 | 10d | 0d |  |  | 400h | 51,200 | 51,200 | QASC1 | CA106000 |
| 107 | 1.7.4.1 | Security Test | 10d | 2051-08-29 | 2051-09-11 | 24, 72 | 2051-08-29 | 2051-09-11 | 10d | 0d |  | QA-Team [400%]; Security Certification Consultant | 400h | 51,200 | 51,200 | QASC1.1 | CA107000 |
| 108 | 1.7.5 | **Security Certification** | 10d | 2051-09-12 | 2051-09-25 |  | 2051-09-12 | 2051-09-25 | 10d | 0d |  |  | 200h | 25,600 | 25,600 | QASE1 | CA108000 |
| 109 | 1.7.5.1 | Security Certification Final | 10d | 2051-09-12 | 2051-09-25 | 107 | 2051-09-12 | 2051-09-25 | 10d | 0d |  | QA-Team [200%]; Security Certification Consultant [50%] | 200h | 25,600 | 25,600 | QASE1.1 | CA109000 |
| 110 | 1.7.6 | **System Certification** | 10d | 2051-09-26 | 2051-10-09 |  | 2051-09-26 | 2051-10-09 | 10d | 0d |  |  | 160h | 17,600 | 17,600 | QASEC1 | CA110000 |
| 111 | 1.7.6.1 | System Certification Final | 10d | 2051-09-26 | 2051-10-09 | 109 | 2051-09-26 | 2051-10-09 | 10d | 0d |  | QA-Team [200%] | 160h | 17,600 | 17,600 | QASEC1.2 | CA111000 |
| 112 | 1.7.7 | **Facilities Inspection** | 200d | 2050-12-13 | 2051-09-18 |  | 2050-12-13 | 2051-09-18 | 200d | 20d |  |  | 1120h | 123,200 | 123,200 | FACI1 | CA112000 |
| 113 | 1.7.7.1 | Inspection Build 1 | 5d | 2050-12-13 | 2050-12-19 | 84 | 2050-12-13 | 2050-12-19 | 5d | 105d | 10d | QA-Team [400%] | 160h | 17,600 | 17,600 | FACI1.1 | CA113000 |
| 114 | 1.7.7.2 | Inspection Build 2 | 5d | 2051-01-31 | 2051-02-06 | 85 | 2051-01-31 | 2051-02-06 | 5d | 95d | 5d | QA-Team [400%] | 160h | 17,600 | 17,600 | FACI1.2 | CA114000 |
| 115 | 1.7.7.3 | Inspection Build 3 | 5d | 2051-03-14 | 2051-03-20 | 86 | 2051-03-14 | 2051-03-20 | 5d | 90d | 50d | QA-Team [400%] | 160h | 17,600 | 17,600 | FACI1.3 | CA115000 |
| 116 | 1.7.7.4 | Inspection Build 4 | 5d | 2051-06-13 | 2051-06-19 | 87 | 2051-06-13 | 2051-06-19 | 5d | 40d | 5d | QA-Team [400%] | 160h | 17,600 | 17,600 | FACI1.4 | CA116000 |
| 117 | 1.7.7.5 | Inspection Build 5 | 5d | 2051-07-11 | 2051-07-17 | 88 | 2051-07-11 | 2051-07-17 | 5d | 35d | 15d | QA-Team [400%] | 160h | 17,600 | 17,600 | FACI1.5 | CA117000 |
| 118 | 1.7.7.6 | Inspection Build 6 | 5d | 2051-08-22 | 2051-08-28 | 89 | 2051-08-22 | 2051-08-28 | 5d | 20d | 0d | QA-Team [400%] | 160h | 17,600 | 17,600 | FACI1.6 | CA118000 |
| 119 | 1.7.7.7 | Inspection Build 7 | 5d | 2051-09-12 | 2051-09-18 | 90 | 2051-09-12 | 2051-09-18 | 5d | 20d | 15d | QA-Team [400%] | 160h | 17,600 | 17,600 | FACI1.7 | CA119000 |
| 120 | 1.8 | **Implementation** | 541d | 2050-05-10 | 2052-06-04 |  | 2050-05-10 | 2052-06-04 | 541d | 0d |  | Heidi Geis | 22968h | 2,591,400 | 2,591,400 | IMP1 | CA120000 |
| 121 | 1.8.1 | **Implementation Planning** | 390d | 2050-05-10 | 2051-11-06 |  | 2050-05-10 | 2051-11-06 | 390d | 0d |  |  | 3040h | 334,400 | 334,400 | IMPP1 | CA121000 |
| 122 | 1.8.1.1 | Implementation Plan Draft 1 | 20d | 2050-05-10 | 2050-06-06 | 15 | 2050-05-10 | 2050-06-06 | 20d | 295d | 65d | Implementation-Team [400%] | 640h | 70,400 | 70,400 | IMPP1.1 | CA122000 |
| 123 | 1.8.1.2 | Implementation Plan Draft 2 | 20d | 2050-09-06 | 2050-10-03 | 122, 32, 51 | 2050-09-06 | 2050-10-03 | 20d | 230d | 170d | Implementation-Team [400%] | 640h | 70,400 | 70,400 | IMPP1.2 | CA123000 |
| 124 | 1.8.1.3 | Implementation Plan Draft 3 | 20d | 2051-05-30 | 2051-06-26 | 123, 64, 43 | 2051-05-30 | 2051-06-26 | 20d | 60d | 45d | Implementation-Team [400%] | 640h | 70,400 | 70,400 | IMPP1.3 | CA124000 |
| 125 | 1.8.1.4 | Implementation Plan Draft 4 | 20d | 2051-08-29 | 2051-09-25 | 124, 24 | 2051-08-29 | 2051-09-25 | 20d | 15d | 10d | Implementation-Team [400%] | 640h | 70,400 | 70,400 | IMPP1.4 | CA125000 |
| 126 | 1.8.1.5 | Implementation Plan Final | 10d | 2051-10-10 | 2051-10-23 | 125, 111 | 2051-10-10 | 2051-10-23 | 10d | 5d |  | Implementation-Team [400%] | 320h | 35,200 | 35,200 | IMPP1.5 | CA126000 |
| 127 | 1.8.1.6 | Implementation Readiness Review | 5d | 2051-10-31 | 2051-11-06 | 126, 91, 145, 158 | 2051-10-31 | 2051-11-06 | 5d | 0d |  | Implementation-Team [400%] | 160h | 17,600 | 17,600 | IMPP1.6 | CA127000 |

| ID | WBS | Task | Duration | Start | Finish | Predecessors | Baseline start | Baseline finish | Baseline duration | Total slack | Free slack | Resources | Work | Cost | Baseline cost | Text1 | Text2 |
| --- | --- | --- | --- | --- | --- | --- | --- | --- | --- | --- | --- | --- | --- | --- | --- | --- | --- |
| 128 | 1.8.2 | **Implementation Phase 1** | 50d | 2052-01-31 | 2052-04-09 |  | 2052-01-31 | 2052-04-09 | 50d | 0d |  |  | 5200h | 572,000 | 572,000 | IMPH1 | CA128000 |
| 129 | 1.8.2.1 | Phase 1 Pilot | 20d | 2052-01-31 | 2052-02-27 | 147 | 2052-01-31 | 2052-02-27 | 20d | 0d |  | Implementation-Team [1000%] | 1600h | 176,000 | 176,000 | IMPH1.1 | CA129000 |
| 130 | 1.8.2.2 | Phase 1 Rollout | 30d | 2052-02-28 | 2052-04-09 | 129 | 2052-02-28 | 2052-04-09 | 30d | 20d | 0d | Implementation-Team [1500%] | 3600h | 396,000 | 396,000 | IMPH1.2 | CA130000 |
| 131 | 1.8.3 | **Implementation Phase 2** | 50d | 2052-02-28 | 2052-05-07 |  | 2052-02-28 | 2052-05-07 | 50d | 0d |  |  | 5200h | 572,000 | 572,000 | IMPH2 | CA131000 |
| 132 | 1.8.3.1 | Phase 2 Pilot | 20d | 2052-02-28 | 2052-03-26 | 129, 148 | 2052-02-28 | 2052-03-26 | 20d | 0d |  | Implementation-Team [1000%] | 1600h | 176,000 | 176,000 | IMPH2.1 | CA132000 |
| 133 | 1.8.3.2 | Phase 2 Rollout | 30d | 2052-03-27 | 2052-05-07 | 132 | 2052-03-27 | 2052-05-07 | 30d | 10d | 0d | Implementation-Team [1500%] | 3600h | 396,000 | 396,000 | IMPH2.2 | CA133000 |
| 134 | 1.8.4 | **Implementation Phase 3** | 50d | 2052-03-27 | 2052-06-04 |  | 2052-03-27 | 2052-06-04 | 50d | 0d |  |  | 5200h | 572,000 | 572,000 | IMPH3 | CA134000 |
| 135 | 1.8.4.1 | Phase 3 Pilot | 20d | 2052-03-27 | 2052-04-23 | 132, 149 | 2052-03-27 | 2052-04-23 | 20d | 0d |  | Implementation-Team [1000%] | 1600h | 176,000 | 176,000 | IMPH3.1 | CA135000 |
| 136 | 1.8.4.2 | Phase 3 Rollout | 30d | 2052-04-24 | 2052-06-04 | 135 | 2052-04-24 | 2052-06-04 | 30d | 0d |  | Implementation-Team [1500%] | 3600h | 396,000 | 396,000 | IMPH3.2 | CA136000 |
| 137 | 1.9 | **Training** | 471d | 2050-05-10 | 2052-02-27 |  | 2050-05-10 | 2052-02-27 | 471d | 20d |  | Jean Cunliffe | 7168h | 845,000 | 845,000 | TR1 | CA137000 |
| 138 | 1.9.1 | **Training Planning** | 15d | 2050-05-10 | 2050-05-30 |  | 2050-05-10 | 2050-05-30 | 15d | 270d |  |  | 280h | 30,800 | 30,800 | TRP1 | CA138000 |
| 139 | 1.9.1.1 | Training Detailed Requirements | 5d | 2050-05-10 | 2050-05-16 | 15 | 2050-05-10 | 2050-05-16 | 5d | 270d | 0d | Training-Team [300%] | 120h | 13,200 | 13,200 | TRP1.1 | CA139000 |
| 140 | 1.9.1.2 | Training Plan | 10d | 2050-05-17 | 2050-05-30 | 139 | 2050-05-17 | 2050-05-30 | 10d | 270d | 70d | Training-Team [200%] | 160h | 17,600 | 17,600 | TRP1.2 | CA140000 |
| 141 | 1.9.2 | **Training Material** | 295d | 2050-09-06 | 2051-10-23 |  | 2050-09-06 | 2051-10-23 | 295d | 5d |  |  | 2400h | 264,000 | 264,000 | TRM1 | CA141000 |
| 142 | 1.9.2.1 | Training Material Draft 1 | 30d | 2050-09-06 | 2050-10-17 | 32, 51, 140 | 2050-09-06 | 2050-10-17 | 30d | 200d | 160d | Training-Team [300%] | 720h | 79,200 | 79,200 | TRM1.1 | CA142000 |
| 143 | 1.9.2.2 | Training Material Draft 2 | 30d | 2051-05-30 | 2051-07-10 | 43, 64, 142 | 2051-05-30 | 2051-07-10 | 30d | 40d | 35d | Training-Team [300%] | 720h | 79,200 | 79,200 | TRM1.2 | CA143000 |
| 144 | 1.9.2.3 | Training Material Draft 3 | 30d | 2051-08-29 | 2051-10-09 | 24, 143 | 2051-08-29 | 2051-10-09 | 30d | 5d | 0d | Training-Team [300%] | 720h | 79,200 | 79,200 | TRM1.3 | CA144000 |
| 145 | 1.9.2.4 | Training Material Final | 10d | 2051-10-10 | 2051-10-23 | 144, 111 | 2051-10-10 | 2051-10-23 | 10d | 5d |  | Training-Team [300%] | 240h | 26,400 | 26,400 | TRM1.4 | CA145000 |
| 146 | 1.9.3 | **Training Phases** | 30d | 2052-01-17 | 2052-02-27 |  | 2052-01-17 | 2052-02-27 | 30d | 0d |  |  | 720h | 79,200 | 79,200 | TRPH1 | CA146000 |
| 147 | 1.9.3.1 | Phase 1 Training | 10d | 2052-01-17 | 2052-01-30 | 168 | 2052-01-17 | 2052-01-30 | 10d | 0d |  | Training-Team [300%] | 240h | 26,400 | 26,400 | TRPH1.1 | CA147000 |
| 148 | 1.9.3.2 | Phase 2 Training | 10d | 2052-01-31 | 2052-02-13 | 147 | 2052-01-31 | 2052-02-13 | 10d | 10d | 0d | Training-Team [300%] | 240h | 26,400 | 26,400 | TRPH1.2 | CA148000 |
| 149 | 1.9.3.3 | Phase 3 Training | 10d | 2052-02-14 | 2052-02-27 | 148 | 2052-02-14 | 2052-02-27 | 10d | 20d |  | Training-Team [300%] | 240h | 26,400 | 26,400 | TRPH1.3 | CA149000 |
| 150 | 1.10 | **Support** | 561d | 2050-05-10 | 2052-07-02 |  | 2050-05-10 | 2052-07-02 | 561d | 0d |  | Henry Kiku | 13928h | 1,599,400 | 1,599,400 | SU1 | CA150000 |
| 151 | 1.10.1 | **Support Planning** | 20d | 2050-05-10 | 2050-06-06 |  | 2050-05-10 | 2050-06-06 | 20d | 265d |  |  | 480h | 52,800 | 52,800 | SUP1 | CA151000 |
| 152 | 1.10.1.1 | Support Detailed Requirements | 10d | 2050-05-10 | 2050-05-23 | 15 | 2050-05-10 | 2050-05-23 | 10d | 265d | 0d | Support-Team [400%] | 320h | 35,200 | 35,200 | SUP1.1 | CA152000 |
| 153 | 1.10.1.2 | Support Plan | 10d | 2050-05-24 | 2050-06-06 | 152 | 2050-05-24 | 2050-06-06 | 10d | 265d | 65d | Support-Team [200%] | 160h | 17,600 | 17,600 | SUP1.2 | CA153000 |

| ID | WBS | Task | Duration | Start | Finish | Predecessors | Baseline start | Baseline finish | Baseline duration | Total slack | Free slack | Resources | Work | Cost | Baseline cost | Text1 | Text2 |
| --- | --- | --- | --- | --- | --- | --- | --- | --- | --- | --- | --- | --- | --- | --- | --- | --- | --- |
| 154 | 1.10.2 | **Support Package** | 300d | 2050-09-06 | 2051-10-30 |  | 2050-09-06 | 2051-10-30 | 300d | 0d |  |  | 3200h | 352,000 | 352,000 | SUPA1 | CA154000 |
| 155 | 1.10.2.1 | Support Package Draft 1 | 30d | 2050-09-06 | 2050-10-17 | 32, 51, 153 | 2050-09-06 | 2050-10-17 | 30d | 200d | 160d | Support-Team [400%] | 960h | 105,600 | 105,600 | SUPA1.1 | CA155000 |
| 156 | 1.10.2.2 | Support Package Draft 2 | 30d | 2051-05-30 | 2051-07-10 | 43, 64, 155 | 2051-05-30 | 2051-07-10 | 30d | 40d | 35d | Support-Team [400%] | 960h | 105,600 | 105,600 | SUPA1.2 | CA156000 |
| 157 | 1.10.2.3 | Support Package Draft 3 | 25d | 2051-08-29 | 2051-10-02 | 24, 156 | 2051-08-29 | 2051-10-02 | 25d | 5d |  | Support-Team [400%] | 800h | 88,000 | 88,000 | SUPA1.3 | CA157000 |
| 158 | 1.10.2.4 | Support Package Final | 15d | 2051-10-10 | 2051-10-30 | 157, 111 | 2051-10-10 | 2051-10-30 | 15d | 0d |  | Support-Team [400%] | 480h | 52,800 | 52,800 | SUPA1.4 | CA158000 |
| 159 | 1.10.3 | **Phase Support** | 60d | 2052-04-10 | 2052-07-02 |  | 2052-04-10 | 2052-07-02 | 60d | 0d |  |  | 5760h | 633,600 | 633,600 | SUPS1 | CA159000 |
| 160 | 1.10.3.1 | Phase 1 Support Transition | 40d | 2052-04-10 | 2052-06-04 | 130 | 2052-04-10 | 2052-06-04 | 40d | 20d |  | Support-Team [800%] | 2560h | 281,600 | 281,600 | SUPS1.1 | CA160000 |
| 161 | 1.10.3.2 | Phase 2 Support Transition | 30d | 2052-05-08 | 2052-06-18 | 133 | 2052-05-08 | 2052-06-18 | 30d | 10d |  | Support-Team [800%] | 1920h | 211,200 | 211,200 | SUPS1.2 | CA161000 |
| 162 | 1.10.3.3 | Phase 3 Support Transition | 20d | 2052-06-05 | 2052-07-02 | 136 | 2052-06-05 | 2052-07-02 | 20d | 0d |  | Support-Team [800%] | 1280h | 140,800 | 140,800 | SUPS1.3 | CA162000 |
| 163 | 1.11 | **Project Management** | 674d | 2050-01-03 | 2052-08-01 |  | 2050-01-03 | 2052-08-01 | 674d | 0d |  |  | 13700h | 7,319,860 | 7,319,860 | PM1 | CA163000 |
| 164 | 1.11.1 | **Project Management Activities** | 673d | 2050-01-03 | 2052-07-31 |  | 2050-01-03 | 2052-07-31 | 673d | 0d |  |  | 13540h | 2,249,860 | 2,249,860 | PMA1 | CA164000 |
| 165 | 1.11.1.1 | Project Management Office | 673d | 2050-01-03 | 2052-07-31 |  | 2050-01-03 | 2052-07-31 | 673d | 1d |  | Charles Wallace; Ellie Arroway; Jonathan Livingston [50%] | 13460h | 1,695,960 | 1,695,960 | PMA1.1 | CA165000 |
| 166 | 1.11.1.2 | Kick-off Meeting | 1d | 2050-01-03 | 2050-01-03 |  | 2050-01-03 | 2050-01-03 | 1d | 0d |  | Kong Qiu; Mary Sperling; Byomkesh Bakshi; Andre Young; Cathy Kerr; Heidi Geis; Son Goku; Irwin Fletcher; Jean Cunliffe; Henry Kiku; Magic Dust [700 Gram] | 80h | 553,900 | 553,900 | PMA1.2 | CA166000 |
| 167 | 1.11.2 | **Risk Budget** | 51d | 2051-11-07 | 2052-01-16 |  | 2051-11-07 | 2052-01-16 | 51d | 0d |  |  |  | 5,050,000 | 5,050,000 | PMRB1 | CA167000 |
| 168 | 1.11.2.1 | Risk Buffer | 51d | 2051-11-07 | 2052-01-16 | 127 | 2051-11-07 | 2052-01-16 | 51d | 0d |  | Risk Budget [0.1%] |  | 5,050,000 | 5,050,000 | PMRB1.1 | CA168000 |
| 169 | 1.11.3 | **Project Closure** | 22d | 2052-07-03 | 2052-08-01 |  | 2052-07-03 | 2052-08-01 | 22d | 0d |  |  | 160h | 20,000 | 20,000 | PMC1 | CA169000 |
| 170 | 1.11.3.1 | Project Closure Readiness Review | 1d | 2052-07-03 | 2052-07-03 | 160, 161, 162 | 2052-07-03 | 2052-07-03 | 1d | 0d |  | Kong Qiu; Mary Sperling; Byomkesh Bakshi; Andre Young; Cathy Kerr; Heidi Geis; Son Goku; Irwin Fletcher; Jean Cunliffe; Henry Kiku | 80h | 10,000 | 10,000 | PMC1.1 | CA170000 |
| 171 | 1.11.3.2 | Final Procurements Closure | 5d | 2052-07-04 | 2052-07-10 | 170 | 2052-07-04 | 2052-07-10 | 5d | 0d |  |  |  |  |  | PMC1.2 | CA171000 |
| 172 | 1.11.3.3 | Lessons Learned Meeting | 1d | 2052-07-11 | 2052-07-11 | 171 | 2052-07-11 | 2052-07-11 | 1d | 0d |  | Kong Qiu; Mary Sperling; Byomkesh Bakshi; Andre Young; Cathy Kerr; Heidi Geis; Son Goku; Irwin Fletcher; Jean Cunliffe; Henry Kiku | 80h | 10,000 | 10,000 | PMC1.3 | CA172000 |
| 173 | 1.11.3.4 | Lessons Learned Report | 5d | 2052-07-12 | 2052-07-18 | 172 | 2052-07-12 | 2052-07-18 | 5d | 0d |  |  |  |  |  | PMC1.4 | CA173000 |
| 174 | 1.11.3.5 | Project Final Report | 10d | 2052-07-19 | 2052-08-01 | 173 | 2052-07-19 | 2052-08-01 | 10d | 0d |  |  |  |  |  | PMC1.5 | CA174000 |

Notes:
- 165: This task collects the project management work throughout the project, and assigns the project management office resources including the project manager, project coordinator, and project scheduler. It is scheduled as one of the last steps in project planning as one day less duration than the full project so that it does not affect the critical path.
- 166: As per the risk management plan, 70% of the anticipated requirement of the critical resource Magic Dust will be procured on the very first day of the project.
